WBS,Name,Type,Start Date,End Date,Color
1,Smart Fridge Development,project,2026-11-20,2028-11-20,
1.1,Project Initiation and Market Research,group,2026-11-20,2027-01-20,
1.1.1,Project kickoff and governance,task,2026-11-20,2026-11-27,blue1
1.1.2,Market and competitor analysis,task,2026-11-28,2026-12-11,blue1
1.1.3,Customer needs and market positioning,task,2026-12-12,2026-12-25,blue1
1.1.4,Technical and economic feasibility,task,2026-12-26,2027-01-02,blue1
1.1.5,Initial risk assessment,task,2027-01-03,2027-01-20,blue1
1.2,Product Requirements and System Architecture,group,2027-01-21,2027-05-20,
1.2.1,Functional requirements,task,2027-01-21,2027-02-10,green3
1.2.2,Technical specifications,task,2027-02-11,2027-03-02,green3
1.2.3,System architecture,task,2027-03-03,2027-03-23,green3
1.2.4,Hardware/software interface definition,task,2027-03-24,2027-04-13,green3
1.2.5,Cost and performance targets,task,2027-04-14,2027-05-04,green3
1.2.6,Requirements approval,task,2027-05-05,2027-05-20,green3
1.3,Hardware and Mechanical Engineering,group,2027-04-01,2028-01-20,
1.3.1,Refrigeration system engineering,task,2027-04-01,2027-06-30,orange1
1.3.2,Cabinet and insulation design,task,2027-07-01,2027-09-15,orange1
1.3.3,Electrical and electronic architecture,task,2027-07-01,2027-09-15,orange1
1.3.4,Sensors and component selection,task,2027-09-16,2027-10-31,orange1
1.3.5,CAD design and engineering reviews,task,2027-11-01,2028-01-05,orange1
1.3.6,Design freeze,task,2028-01-06,2028-01-20,orange1
1.4,"Software, Embedded Systems and IoT",group,2027-04-01,2028-01-31,
1.4.1,Embedded software architecture,task,2027-04-01,2027-06-30,yellow1
1.4.2,Firmware development,task,2027-07-01,2027-10-31,yellow1
1.4.3,Sensor data acquisition,task,2027-08-01,2027-10-15,yellow1
1.4.4,IoT and connectivity development,task,2027-08-15,2028-01-01,yellow1
1.4.5,Mobile and cloud integration,task,2027-10-16,2027-12-30,yellow1
1.4.6,Initial smart functionalities,task,2027-12-01,2028-01-15,yellow1
1.4.7,Hardware/software integration,task,2028-01-16,2028-01-31,yellow1
1.5,"Industrialization, Procurement and Tooling",group,2027-06-01,2028-02-20,
1.5.1,Supplier identification and selection,task,2027-06-01,2027-08-15,purple1
1.5.2,Component sourcing,task,2027-08-16,2027-10-10,purple1
1.5.3,Supplier qualification,task,2027-10-11,2027-11-25,purple1
1.5.4,Manufacturing process design,task,2027-11-26,2028-01-05,purple1
1.5.5,Tooling preparation,task,2028-01-06,2028-02-10,purple1
1.5.6,Production cost analysis,task,2028-02-11,2028-02-20,purple1
1.6,Wave 1 – Core Prototype Development,group,2027-10-01,2028-02-20,
1.6.1,Prototype component procurement,task,2027-10-01,2027-12-15,red1
1.6.2,Mechanical and electrical assembly,task,2028-01-01,2028-01-31,red1
1.6.3,Refrigeration system integration,task,2028-02-01,2028-02-05,red1
1.6.4,Embedded software integration,task,2028-02-06,2028-02-10,red1
1.6.5,Core IoT functionality integration,task,2028-02-11,2028-02-13,red1
1.6.6,First integrated prototype,task,2028-02-14,2028-02-15,red1
1.6.7,Prototype review and approval,task,2028-02-16,2028-02-20,red1
1.7,Testing and Quality Assurance,group,2028-02-21,2028-07-20,
1.7.1,Functional testing,task,2028-02-21,2028-04-10,blue3
1.7.2,Refrigeration performance testing,task,2028-04-11,2028-05-10,blue3
1.7.3,Energy-efficiency testing,task,2028-05-11,2028-05-31,blue3
1.7.4,Reliability and durability testing,task,2028-06-01,2028-06-21,blue3
1.7.5,Electrical and safety testing,task,2028-06-22,2028-07-02,blue3
1.7.6,Connectivity testing,task,2028-07-03,2028-07-10,blue3
1.7.7,Defect correction and retesting,task,2028-07-11,2028-07-20,blue3
1.8,Wave 2 – Advanced Smart Features,group,2028-02-21,2028-07-30,
1.8.1,Smart screen integration,task,2028-02-21,2028-04-20,magenta1
1.8.2,AI feature development,task,2028-04-21,2028-06-10,magenta1
1.8.3,Advanced software functionalities,task,2028-06-11,2028-06-30,magenta1
1.8.4,User interface development,task,2028-06-01,2028-07-10,magenta1
1.8.5,Integration with Wave 1 architecture,task,2028-07-11,2028-07-15,magenta1
1.8.6,System optimization,task,2028-07-16,2028-07-20,magenta1
1.8.7,Advanced feature validation,task,2028-07-21,2028-07-30,magenta1
1.9,"Final Validation, Certification and Market Launch",group,2028-07-21,2028-11-20,
1.9.1,Final system integration,task,2028-07-21,2028-08-10,green1
1.9.2,Complete product validation,task,2028-08-11,2028-09-20,green1
1.9.3,Regulatory compliance and certification,task,2028-09-21,2028-10-10,green1
1.9.4,Final quality approval,task,2028-10-11,2028-10-20,green1
1.9.5,Production readiness review,task,2028-10-21,2028-11-01,green1
1.9.6,Launch preparation,task,2028-11-02,2028-11-15,green1
1.9.7,Commercial launch and project closure,task,2028-11-16,2028-11-20,green1
